# GreatToys SmartBear

Schedule from MS Project, 2018-06-04 to 2019-02-13, costs in $.
CQUniversity Australia

## Calendars

- Standard: Mon-Fri 08:00-12:00, 13:00-17:00; Sat-Sun off. Exceptions (off unless hours are given): 2018-08-06 (Public Holiday 1), 2019-01-01 (New Year), 2019-01-28 (public holiday 2).

## Resources

| Resource | Rate |
| --- | --- |
| Electronic Engineer | 90 |
| Software Engineer | 80 |
| Mechanical Engineer | 70 |
| Test Engineer | 95 |
| Production Engineer | 100 |

## Schedule

| ID | WBS | Task | Duration | Start | Finish | Predecessors | Total slack | Free slack | Resources | Work | Cost |
| --- | --- | --- | --- | --- | --- | --- | --- | --- | --- | --- | --- |
| 1 | 1 | **Electronics** | 128d | 2018-06-04 | 2018-11-29 |  | 42d |  |  | 360h | 32,400 |
| 2 | 1.1 | PWB Outline | 2w | 2018-06-04 | 2018-06-15 | 42 | 68d | 0d | Electronic Engineer | 80h | 7,200 |
| 3 | 1.2 | Component Selection | 3w | 2018-06-18 | 2018-07-06 | 2 | 78d | 20d | Electronic Engineer | 120h | 10,800 |
| 4 | 1.3 | Circuit Design | 2w | 2018-07-09 | 2018-07-20 | 2 | 68d | 10d | Electronic Engineer | 80h | 7,200 |
| 5 | 1.4 | Electronic verification tests | 1w | 2018-11-16 | 2018-11-22 | 44 | 42d | 0d | Electronic Engineer | 40h | 3,600 |
| 6 | 1.5 | Thermal verification tests | 3d | 2018-11-23 | 2018-11-27 | 5 | 42d | 0d | Electronic Engineer | 24h | 2,160 |
| 7 | 1.6 | EMC verification tasks | 2d | 2018-11-28 | 2018-11-29 | 6 | 42d |  | Electronic Engineer | 16h | 1,440 |
| 8 | 2 | **Software** | 118d | 2018-06-04 | 2018-11-15 |  | 0d |  |  | 1624h | 129,920 |
| 9 | 2.1 | Detailed software analysis | 3w | 2018-06-04 | 2018-06-22 | 42 | 0d |  | Software Engineer | 120h | 9,600 |
| 10 | 2.2 | User interface specification | 2w | 2018-06-04 | 2018-06-15 | 42 | 35d | 0d | Software Engineer | 80h | 6,400 |
| 11 | 2.3 | Database analysis | 2w | 2018-06-25 | 2018-07-06 | 9 | 45d | 0d | Software Engineer | 80h | 6,400 |
| 12 | 2.4 | Software design | 6w | 2018-06-25 | 2018-08-03 | 9 | 0d |  | Software Engineer | 240h | 19,200 |
| 13 | 2.5 | User interface design | 2w | 2018-07-09 | 2018-07-20 | 10 | 34d | 0d | Software Engineer | 80h | 6,400 |
| 14 | 2.6 | Database design | 3w | 2018-07-09 | 2018-07-27 | 11 | 45d | 0d | Software Engineer | 120h | 9,600 |
| 15 | 2.7 | Software development | 7w | 2018-08-21 | 2018-10-08 | 12 | 0d |  | Software Engineer [200%] | 560h | 44,800 |
| 16 | 2.8 | User interface development | 2w | 2018-08-07 | 2018-08-20 | 13 | 35d |  | Software Engineer | 80h | 6,400 |
| 17 | 2.9 | Database development | 1w | 2018-07-30 | 2018-08-03 | 14 | 45d |  | Software Engineer | 40h | 3,200 |
| 18 | 2.10 | R1 release creation | 3d | 2018-10-09 | 2018-10-11 | 15, 16, 17 | 0d |  | Software Engineer | 24h | 1,920 |
| 19 | 2.11 | R1 release tests | 2w | 2018-10-12 | 2018-10-25 | 18 | 0d |  | Software Engineer | 80h | 6,400 |
| 20 | 2.12 | R1 error correction and interface improvements | 3w | 2018-10-26 | 2018-11-15 | 19 | 0d |  | Software Engineer | 120h | 9,600 |
| 21 | 3 | **Mechanics** | 25d | 2018-06-04 | 2018-07-06 |  | 78d |  |  | 240h | 16,800 |
| 22 | 3.1 | Industrial design | 2w | 2018-06-04 | 2018-06-15 | 42 | 78d | 0d | Mechanical Engineer | 80h | 5,600 |
| 23 | 3.2 | PWB outline modifications | 1w | 2018-06-18 | 2018-06-22 | 22 | 78d | 0d | Mechanical Engineer | 40h | 2,800 |
| 24 | 3.3 | P1 mechanical CAD design | 1w | 2018-06-25 | 2018-06-29 | 23 | 78d | 0d | Mechanical Engineer [200%] | 80h | 5,600 |
| 25 | 3.4 | Tolerance stack analysis | 1w | 2018-07-02 | 2018-07-06 | 24 | 78d | 20d | Mechanical Engineer | 40h | 2,800 |

| ID | WBS | Task | Type | Duration | Start | Finish | Predecessors | Total slack | Free slack | Resources | Work | Cost |
| --- | --- | --- | --- | --- | --- | --- | --- | --- | --- | --- | --- | --- |
| 26 | 4 | **Verification** |  | 170d | 2018-06-04 | 2019-01-30 |  | 0d |  |  | 520h | 47,000 |
| 27 | 4.1 | Test plan creation |  | 2w | 2018-06-04 | 2018-06-15 | 42 | 93d | 35d | Test Engineer | 80h | 7,600 |
| 28 | 4.2 | Component tests |  | 1w | 2018-08-21 | 2018-08-27 | 35, 36, 37, 27 | 58d |  | Test Engineer | 40h | 3,800 |
| 29 | 4.3 | Module tests |  | 2w | 2018-11-20 | 2018-12-03 | 39, 28 | 0d |  | Software Engineer; Test Engineer | 160h | 14,000 |
| 30 | 4.4 | System integration tests |  | 2w | 2018-12-04 | 2018-12-17 | 29 | 0d |  | Software Engineer; Test Engineer | 160h | 14,000 |
| 31 | 4.5 | Product validation tests |  | 1w | 2018-12-18 | 2018-12-24 | 30 | 0d |  | Test Engineer | 40h | 3,800 |
| 32 | 4.6 | Technical construction file compilation |  | 1w | 2018-12-25 | 2018-12-31 | 31 | 0d |  | Test Engineer | 40h | 3,800 |
| 33 | 4.7 | Regulatory approval tests |  | 4w | 2019-01-02 | 2019-01-30 | 32 | 0d |  |  |  |  |
| 34 | 5 | **Production** |  | 75d | 2018-08-07 | 2018-11-19 |  | 0d |  |  |  |  |
| 35 | 5.1 | P1 component lead time |  | 2w | 2018-08-07 | 2018-08-20 | 43 | 58d | 0d |  |  |  |
| 36 | 5.2 | P1 PWB manufacture and delivery |  | 2w | 2018-08-07 | 2018-08-20 | 43 | 58d | 0d |  |  |  |
| 37 | 5.3 | P1 mechanical part lead time |  | 2w | 2018-08-07 | 2018-08-20 | 43 | 58d | 0d |  |  |  |
| 38 | 5.4 | P1 assembly and production test preparation |  | 3w | 2018-08-07 | 2018-08-27 | 43 | 58d |  |  |  |  |
| 39 | 5.5 | P1 prototype build |  | 2d | 2018-11-16 | 2018-11-19 | 44 | 0d |  |  |  |  |
| 40 | 6 | Production of 1000 devices |  | 2w | 2019-01-31 | 2019-02-13 | 45 | 0d |  | Production Engineer | 80h | 8,000 |
| 41 | 7 | **Milestones** |  | 180d | 2018-06-04 | 2019-02-13 |  | 0d |  |  |  |  |
| 42 | M1 | M1 Concept Review | milestone | 0d | 2018-06-04 | 2018-06-04 |  | 0d |  |  |  |  |
| 43 | M2 | M2 design review | milestone | 0d | 2018-08-03 | 2018-08-03 | 2, 3, 4, 12, 13, 14, 25, 27 | 58d | 0d |  |  |  |
| 44 | P1 | P1 Proto Build (ready for) | milestone | 0d | 2018-11-15 | 2018-11-15 | 20, 28, 35, 36, 37, 38 | 0d |  |  |  |  |
| 45 | M3 | M3 Final design review | milestone | 0d | 2019-01-30 | 2019-01-30 | 7, 33 | 0d |  |  |  |  |
| 46 | M4 | M4 launch review | milestone | 0d | 2019-02-13 | 2019-02-13 | 40 | 0d |  |  |  |  |
